# 施工进度

Schedule from a web Gantt chart, 2025-07-02 to 2025-10-30.
Every day is a working day

## Schedule

| ID | WBS | Task | Duration | Start | Finish |
| --- | --- | --- | --- | --- | --- |
| 2 | 1 | **现场准备、深化设计、交底、临时设施、防水** | 75d | 2025-07-02 | 2025-09-14 |
| 3 | 1.1 | 交付团队入场、项目启动会 | 4d | 2025-07-29 | 2025-08-01 |
| 4 | 1.2 | 深化设计、设计交底、图纸会审 | 10d | 2025-07-23 | 2025-08-01 |
| 5 | 1.3 | 技术、安全交底 | 1d | 2025-07-02 | 2025-07-02 |
| 6 | 1.4 | 现场临时设施配置 | 6d | 2025-08-01 | 2025-08-06 |
| 7 | 1.5 | 防水施工及试验 | 31d | 2025-08-15 | 2025-09-14 |
| 8 | 2 | **主要设备/材料到货计划** | 47d | 2025-08-06 | 2025-09-21 |
| 9 | 2.1 | 水泥/防静电漆/顶部漆采购，到货 | 11d | 2025-08-06 | 2025-08-16 |
| 10 | 2.2 | 设备底座、钢结构、管道材料采购到货 | 21d | 2025-08-07 | 2025-08-27 |
| 11 | 2.3 | 桥架到货 | 31d | 2025-08-07 | 2025-09-06 |
| 12 | 2.4 | 轻质隔墙材料采购，到货 | 26d | 2025-08-06 | 2025-08-31 |
| 13 | 2.5 | 照明采购，到货 | 31d | 2025-08-07 | 2025-09-06 |
| 14 | 2.6 | 中压柜、变压器采购，到货 | 41d | 2025-08-07 | 2025-09-16 |
| 15 | 2.7 | 氟泵空调到货 | 41d | 2025-08-07 | 2025-09-16 |
| 16 | 2.8 | UPS、电池架、蓄电池，到货 | 41d | 2025-08-07 | 2025-09-16 |
| 17 | 2.9 | 静电地板到货 | 11d | 2025-08-14 | 2025-08-24 |
| 18 | 2.10 | 风机到货 | 21d | 2025-08-17 | 2025-09-06 |
| 19 | 2.11 | 加湿器到货 | 41d | 2025-08-07 | 2025-09-16 |
| 20 | 2.12 | 低压配电柜/配电箱到货 | 26d | 2025-08-12 | 2025-09-06 |
| 21 | 2.13 | 机柜及冷通道到货 | 31d | 2025-08-06 | 2025-09-05 |
| 22 | 2.14 | 弱电监控设备到货 | 41d | 2025-08-12 | 2025-09-21 |
| 23 | 2.15 | 线缆到货 | 31d | 2025-08-12 | 2025-09-11 |
| 24 | 3 | 机房施工 | 31d | 2025-09-15 | 2025-10-15 |
| 25 | 4 | 测试验收 | 16d | 2025-10-15 | 2025-10-30 |
